# dd

Schedule from MS Project, 2008-05-13 to 2008-11-10, A marks actual dates.

## Calendars

- Standard: Mon-Fri 08:00-12:00, 13:00-17:00; Sat-Sun off. Exceptions (off unless hours are given): 2008-05-20 (IPCTN), 2008-05-22 (Feriado), 2008-06-10 (Feriado), 2008-06-13 (Feriado), 2008-08-15 (Feriado).

## Resources

| Resource |
| --- |
| Pedro Santos |
| Nuno Silva |
| Tiago Sousa |
| Marco Vale |
| PDM |
| P |

## Schedule

| ID | Task | Type | Duration | Start | Finish | Predecessors | Complete | Remaining | Total slack | Free slack | Constraint | Resources | Work | Actual work |
| --- | --- | --- | --- | --- | --- | --- | --- | --- | --- | --- | --- | --- | --- | --- |
| 1 | MileStone 0 | milestone | 1d | 2008-05-16 | 2008-05-18 |  |  |  | 25d |  | finish no earlier than 2008-05-18 |  |  |  |
| 2 | MileStone 1 | milestone | 20d | 2008-05-19 | 2008-06-19 | 1 |  |  | 38d | 0d | finish no earlier than 2008-06-17 |  |  |  |
| 3 | MileStone 2 | milestone | 30d | 2008-06-20 | 2008-07-31 | 2 |  |  | 38d | 0d |  |  |  |  |
| 4 | MileStone 3 | milestone | 22d | 2008-08-01 | 2008-09-02 | 3 |  |  | 38d |  |  |  |  |  |
| 5 | Algoritmo Elo Ranking |  | 3d | 2008-05-19 A | 2008-05-26 A |  | 100% |  |  |  | start no earlier than 2008-05-19 | Tiago Sousa | 24h | 24h |
| 6 | Ladders 2 Player |  | 5d | 2008-05-27 A | 2008-06-02 A | 5 | 100% |  |  |  | start no earlier than 2008-05-21 | Tiago Sousa | 40h | 40h |
| 7 | Página de Teste de Ladder |  | 2d | 2008-06-03 A | 2008-06-04 A | 6, 24 | 100% |  |  |  | start no earlier than 2008-05-29 | Tiago Sousa | 16h | 16h |
| 8 | Ladder 4 Players |  | 5d | 2008-06-05 A | 2008-06-12 A | 7 | 100% |  |  |  |  | Tiago Sousa | 40h | 40h |
| 9 | Página de Teste de Ladder 4 Players |  | 3d | 2008-06-16 A | 2008-06-18 A | 8 | 100% |  |  |  | start no earlier than 2008-06-06 | Tiago Sousa | 24h | 24h |
| 10 | Motor de Configuração de Torneios |  | 8d | 2008-06-26 A | 2008-07-07 A | 31 | 100% |  |  |  | start no earlier than 2008-06-18 | Tiago Sousa | 64h | 64h |
| 11 | Algoritmo de Passagem de fases |  | 6d | 2008-07-08 A | 2008-07-15 A | 10 | 100% |  |  |  |  | Tiago Sousa | 48h | 48h |
| 12 | Paginas de Teste |  | 5d | 2008-07-16 A | 2008-07-22 A | 11 | 100% |  |  |  |  | Tiago Sousa | 40h | 40h |
| 13 | Auction House |  | 15d | 2008-07-23 A | 2008-08-12 A | 12 | 100% |  |  |  |  | Tiago Sousa | 120h | 120h |
| 14 | Testes às Funcionalidades feitas |  | 7d | 2008-08-13 A | 2008-08-22 A | 13 | 100% |  |  |  |  | Tiago Sousa | 56h | 56h |
| 15 | Motor de Mercado |  | 7d | 2008-08-25 | 2008-09-02 | 14, 20 |  |  | 19d | 0d |  | Tiago Sousa | 56h |  |
| 16 | Integração com o universo |  | 3d | 2008-09-03 | 2008-09-05 | 15 |  |  | 19d | 0d |  | Tiago Sousa | 24h |  |
| 17 | Motor Arena |  | 7d | 2008-09-08 | 2008-09-16 | 16 |  |  | 19d | 0d |  | Tiago Sousa | 56h |  |
| 18 | Integração com o universo |  | 4d | 2008-09-17 | 2008-09-22 | 17 |  |  | 19d | 0d |  | Tiago Sousa | 32h |  |
| 19 | Message Board |  | 3d | 2008-09-23 | 2008-09-25 | 18 |  |  | 19d | 0d |  |  |  |  |
| 20 | Torneios Privados |  | 3d | 2008-09-26 | 2008-09-30 | 19 |  |  | 19d | 0d |  | Tiago Sousa | 24h |  |
| 21 | Layout dos Torneios |  | 5d | 2008-10-01 | 2008-10-07 | 61, 20, 18 |  |  | 19d | 0d | start no earlier than 2008-08-21 | Tiago Sousa | 40h |  |
| 22 | Layout da Auction House |  | 5d | 2008-10-08 | 2008-10-14 | 21 |  |  | 19d |  | start no earlier than 2008-08-28 | Tiago Sousa | 40h |  |
| 23 | Replay de Batalhas |  | 2d | 2008-05-19 A | 2008-05-21 A |  | 100% |  |  |  | start no earlier than 2008-05-19 | Nuno Silva [150%] | 24h | 24h |
| 24 | Batalhas de 4 Players |  | 4d | 2008-05-23 A | 2008-05-28 A | 23 | 100% |  |  |  |  | Nuno Silva | 32h | 32h |
| 25 | Mensagens de Batalha |  | 2d | 2008-05-29 A | 2008-05-30 A | 24 | 100% |  |  |  | start no earlier than 2008-05-29 | Nuno Silva | 16h | 16h |
| 26 | Timeouts das Batalhas |  | 2d | 2008-06-02 A | 2008-06-03 A | 25 | 100% |  |  |  | start no earlier than 2008-05-29 | Nuno Silva | 16h | 16h |
| 27 | Effects |  | 2d | 2008-06-04 A | 2008-06-05 A | 26 | 100% |  |  |  |  | Nuno Silva | 16h | 16h |
| 28 | Página de Registo |  | 1d | 2008-06-06 A | 2008-06-06 A | 27 | 100% |  |  |  | start no earlier than 2008-05-28 | Nuno Silva | 8h | 8h |
| 29 | Página de Listagem de Batalhas |  | 2d | 2008-06-09 A | 2008-06-11 | 28 | 95% | 0.1d | 106d |  | start no earlier than 2008-06-04 | Nuno Silva | 16h | 15.2h |
| 30 | Design do mapa do universo |  | 4d | 2008-06-12 A | 2008-06-18 A | 29 | 100% |  |  |  |  | Nuno Silva | 32h | 32h |
| 31 | Definir Componentes do Mapa |  | 5d | 2008-06-19 A | 2008-06-25 A | 9, 30, 44 | 100% |  |  |  | start no earlier than 2008-06-17 | Nuno Silva | 40h | 40h |
| 32 | Definir algoritmos aleatórios dos planetas |  | 2d | 2008-06-26 A | 2008-06-27 | 31 | 95% | 0.1d | 95d |  |  | Nuno Silva | 16h | 15.2h |
| 33 | Movimento de Armadas |  | 6d | 2008-06-30 A | 2008-07-07 A | 32 | 100% |  |  |  |  | Nuno Silva | 48h | 48h |
| 34 | Iniciar batalhas entre jogadores |  | 4d | 2008-07-08 A | 2008-07-11 A | 33 | 100% |  |  |  |  | Nuno Silva | 32h | 32h |
| 35 | Implementação do Mapa do Universo |  | 22d | 2008-07-14 A | 2008-08-12 | 34 | 50% | 11d | 40d | 0d | start no earlier than 2008-06-11 | Nuno Silva | 176h | 88h |
| 36 | Layout da Batalha |  | 7d | 2008-08-13 | 2008-08-22 | 35, 59 |  |  | 46d | 0d |  | Nuno Silva | 56h |  |
| 37 | Teste às funcionalidades Feitas |  | 6d | 2008-08-25 | 2008-09-01 | 36 |  |  | 46d | 0d |  | Nuno Silva | 48h |  |
| 38 | Motor de AI |  | 5d | 2008-09-02 | 2008-09-08 | 37 |  |  | 46d | 0d |  | Nuno Silva | 40h |  |
| 39 | Integração da AI com o deslocamento no Universo |  | 5d | 2008-09-09 | 2008-09-15 | 38 |  |  | 46d |  |  | Nuno Silva | 40h |  |
| 40 | Motor de Custos e Duração |  | 4d | 2008-05-19 A | 2008-05-26 A |  | 100% |  |  |  | start no earlier than 2008-05-19 | Pedro Santos | 32h | 32h |
| 41 | Gestor de Tempo |  | 3d | 2008-05-27 A | 2008-05-29 A | 40 | 100% |  |  |  |  | Pedro Santos | 24h | 24h |
| 42 | Motor de Timed Actions |  | 3d | 2008-05-30 A | 2008-06-03 A | 41 | 100% |  |  |  |  | Pedro Santos | 24h | 24h |
| 43 | Construção de Recursos |  | 1d | 2008-06-04 A | 2008-06-04 A | 42 | 100% |  |  |  |  | Pedro Santos | 8h | 8h |
| 44 | Modificadores |  | 8d | 2008-06-05 A | 2008-06-18 A | 43 | 100% |  |  |  |  | Pedro Santos | 64h | 64h |
| 45 | Configuração de Planetas |  | 4d | 2008-06-26 A | 2008-07-01 A | 31 | 100% |  |  |  |  | Pedro Santos | 32h | 32h |
| 46 | Métricas de Jogo |  | 2d | 2008-07-02 A | 2008-07-03 A | 45 | 100% |  |  |  | start no earlier than 2008-06-18 | Pedro Santos | 16h | 16h |
| 47 | Wiki |  | 4d | 2008-07-04 A | 2008-07-09 | 46 | 60% | 1.6d | 87d |  |  | Pedro Santos | 32h | 19.2h |
| 48 | Motor de Quests |  | 6d | 2008-07-10 A | 2008-07-17 A | 47 | 100% |  |  |  |  | Pedro Santos | 48h | 48h |
| 49 | Página de testes de Quests |  | 2d | 2008-07-18 | 2008-07-21 | 48 |  |  | 42d | 0d |  | Pedro Santos | 16h |  |
| 50 | Alianças |  | 8d | 2008-07-22 A | 2008-07-31 A | 49 | 100% |  |  |  | start no earlier than 2008-07-09 | Pedro Santos | 64h | 64h |
| 51 | Página das Alianças |  | 7d | 2008-08-01 A | 2008-08-11 | 50 | 80% | 1.4d | 36d | 0d |  | Pedro Santos | 56h | 44.8h |
| 52 | Página de criação de Players |  | 2d | 2008-08-12 | 2008-08-13 | 51 |  |  | 42d | 2d |  | Pedro Santos | 16h |  |
| 53 | Layout de Gestão de Recursos |  | 6d | 2008-09-16 | 2008-09-23 | 60, 52 |  |  | 7d | 0d | start no earlier than 2008-07-30 | Pedro Santos | 48h |  |
| 54 | Definição de edificios e raças |  | 3d | 2008-09-24 | 2008-09-26 | 53 |  |  | 7d | 0d |  | Pedro Santos | 24h |  |
| 55 | Ultimate Weapons |  | 6d | 2008-09-29 | 2008-10-06 | 54 |  |  | 7d | 0d |  | Pedro Santos | 48h |  |
| 56 | Teste às funcionalidades feitas |  | 11d | 2008-10-07 | 2008-10-21 | 55 |  |  | 7d |  |  | Pedro Santos | 88h |  |
| 57 | Página de Perfil |  | 2d | 2008-05-13 | 2008-05-14 |  |  |  | 123d |  |  | Pedro Santos | 16h |  |
| 58 | Recursos |  | 7d | 2008-05-19 A | 2008-05-29 A |  | 100% |  |  |  | start no earlier than 2008-05-19 | Marco Vale | 56h | 56h |
| 59 | 1 Versão Layout das batalhas |  | 15d | 2008-06-25 A | 2008-07-15 A | 58 | 100% |  |  |  | finish no earlier than 2008-07-15 | Marco Vale | 120h | 120h |
| 60 | 1ª versão do Layout da gestão de Recursos |  | 42d | 2008-07-17 | 2008-09-15 | 59 |  |  | 0d |  | finish no earlier than 2008-09-15 | Marco Vale | 336h |  |
| 61 | 1ª Versão do Layout do Torneio |  | 7d | 2008-09-16 | 2008-09-24 | 60 |  |  | 0d |  |  | Marco Vale | 56h |  |
| 62 | 1ª Versão do Layout da Auction House |  | 6d | 2008-09-25 | 2008-10-02 | 61 |  |  | 0d |  | start no earlier than 2008-08-11 | Marco Vale | 48h |  |
| 63 | 1ª Versão do Layout da Diplomacia |  | 5d | 2008-10-03 | 2008-10-09 | 62 |  |  | 0d |  |  | Marco Vale | 40h |  |
| 64 | 1ª Versão do Layout das Alianças |  | 5d | 2008-10-10 | 2008-10-16 | 63 |  |  | 0d |  |  | Marco Vale | 40h |  |
| 65 | 1º Versão do Layout do Universo |  | 7d | 2008-10-17 | 2008-10-27 | 64 |  |  | 0d |  |  | Marco Vale | 56h |  |
| 66 | Site Institucional |  | 10d | 2008-10-28 | 2008-11-10 | 65 |  |  | 0d |  |  | Marco Vale | 80h |  |
| 67 | 3 Máquinas DECENTES na PDM para trabalhar |  | 8d | 2008-05-19 A | 2008-05-30 A |  | 100% |  |  |  | start no earlier than 2008-05-19 | PDM | 64h | 64h |
| 68 | Um Servidor para Testes |  | 13d | 2008-06-02 A | 2008-06-20 A | 67 | 100% |  |  |  |  | PDM | 104h | 104h |
